# 建设银行_数据仓库管理信息系统_基础仓库项目进度计划_v1.0_20050305

Schedule from MS Project, 2013-08-01 to 2017-12-30, A marks actual dates.
NCR

## Calendars

- 标准: Mon-Fri 08:00-12:00, 13:00-17:00; Sat-Sun off.

## Resources

| Resource |
| --- |
| PM |
| 牛云飞 |
| 卢周等 |
| 李新光等 |
| 张晓刚 |
| 李新光 |
| 全哨 |
| 崔小明 |

## Schedule

| ID | WBS | Task | Type | Duration | Start | Finish | Predecessors | Complete | Remaining | Actual start | Baseline start | Baseline finish | Baseline duration | Total slack | Free slack | Constraint | Resources | Work | Actual work | Text1 |
| --- | --- | --- | --- | --- | --- | --- | --- | --- | --- | --- | --- | --- | --- | --- | --- | --- | --- | --- | --- | --- |
| 1 | 1 | **Hadoop大数据平台建设项目计划** |  | 137d? | 2017-06-24 | 2017-12-30 |  | 2% | 134.64d? | 2013-08-01 |  |  |  |  |  |  |  | 3568h | 64h |  |
| 2 | 1.1 | **前期准备阶段** |  | 4d | 2017-06-24 A | 2017-06-28 |  | 89% | 0.44d |  |  |  |  |  |  |  |  | 72h | 64h |  |
| 3 | 1.1.1 | 项目启动材料准备及启动会 | milestone | 0d | 2017-06-24 A | 2017-06-25 A |  | 100% |  |  | 2008-06-16 | 2008-06-20 | 5d |  |  | finish no earlier than 2017-06-25 | PM |  |  | 项目启动会材料 |
| 4 | 1.1.2 | 管理流程及模板准备 |  | 3d | 2017-06-25 A | 2017-06-28 A | 3 | 100% |  |  | 2008-06-16 | 2008-06-20 | 5d |  |  | finish no earlier than 2017-06-28 | PM | 24h | 24h | 项目启动会材料 |
| 5 | 1.1.3 | 项目配置平台准备 |  | 3d | 2017-06-25 A | 2017-06-28 | 3 | 67% | 1d |  | 2008-06-16 | 2008-06-16 | 1d | 132d |  | finish no earlier than 2017-06-28 | PM | 24h | 16h |  |
| 6 | 1.1.4 | 项目计划制订及确认 |  | 3d | 2017-06-25 A | 2017-06-28 A | 3 | 100% |  |  | 2008-06-16 | 2008-06-30 | 11d? |  |  | finish no earlier than 2017-06-28 | 李新光 | 24h | 24h |  |
| 7 | 1.2 | **系统分析阶段** |  | 12d? | 2017-07-01 | 2017-07-16 |  |  |  |  |  |  |  |  |  |  |  | 192h |  |  |
| 8 | 1.2.1 | **业务调研** |  | 4d | 2017-07-01 | 2017-07-05 |  |  |  |  |  |  |  |  |  |  |  | 40h |  |  |
| 9 | 1.2.1.1 | 核心业务调研 |  | 2d | 2017-06-29 | 2017-07-02 |  |  |  |  |  |  |  | 130d |  | finish no earlier than 2017-07-02 | 全哨 | 16h |  |  |
| 10 | 1.2.1.2 | 周边业务调研 |  | 2d | 2017-07-03 | 2017-07-04 |  |  |  |  |  |  |  | 128d |  | start no earlier than 2017-07-03 | 全哨 | 16h |  |  |
| 11 | 1.2.1.3 | 业务需求整理 |  | 1d | 2017-07-05 | 2017-07-05 |  |  |  |  |  |  |  | 127d |  | start no earlier than 2017-07-05 | 全哨 | 8h |  |  |
| 12 | 1.2.2 | **数据调研** |  | 12d | 2017-07-01 | 2017-07-16 |  |  |  |  |  |  |  |  |  |  |  | 104h |  |  |
| 13 | 1.2.2.1 | 结合业务需求初筛各业务系统一期要拿的表清单 |  | 3d | 2017-07-03 | 2017-07-05 |  |  |  |  |  |  |  | 125d | 0d | finish no earlier than 2017-07-05 | 崔小明 | 24h |  |  |
| 14 | 1.2.2.3 | 确定样本数据的范围及数据量 | milestone | 0d | 2017-07-09 | 2017-07-09 | 13 |  |  |  |  |  |  | 125d |  | finish no earlier than 2017-07-09 | 崔小明 |  |  |  |
| 15 | 1.2.2.4 | 确定实际运行时数据的范围及数据量(包括初始加载和日常加载) |  | 2d | 2017-07-06 | 2017-07-09 | 13 |  |  |  |  |  |  | 125d |  | finish no earlier than 2017-07-09 | 崔小明 | 16h |  |  |
| 16 | 1.2.2.5 | 确定表清单，整理数据字典 |  | 3d | 2017-07-05 | 2017-07-09 |  |  |  |  |  |  |  | 120d | 0d | finish no earlier than 2017-07-09 | 崔小明 | 24h |  |  |
| 17 | 1.2.2.6 | 下载样本数据 |  | 5d | 2017-07-10 | 2017-07-16 | 16 |  |  |  |  |  |  | 120d |  | finish no earlier than 2017-07-16 | 崔小明 | 40h |  |  |
| 18 | 1.2.3 | **技术调研** |  | 7d | 2017-07-01 | 2017-07-09 |  |  |  |  |  |  |  |  |  |  |  | 48h |  |  |
| 19 | 1.2.3.1 | 数据仓库数据抽取、加载现状调研 |  | 3d | 2017-07-03 | 2017-07-05 |  |  |  |  |  |  |  | 127d |  | finish no earlier than 2017-07-05 | 崔小明 | 24h |  |  |
| 20 | 1.2.3.2 | 商讨数据下载策略，包括样本数据阶段以及实际运行阶段(实际运行阶段包括初始加载和日常加载两部分) |  | 3d | 2017-07-05 | 2017-07-09 |  |  |  |  |  |  |  | 125d |  | finish no earlier than 2017-07-09 | 崔小明 | 24h |  |  |
| 21 | 1.2.4 | 评审数据源分析报告 | milestone | 0d? | 2017-07-09 | 2017-07-09 |  |  |  |  |  |  |  | 125d |  | finish no earlier than 2017-07-09 | 李新光 |  |  |  |
| 22 | 1.3 | **系统设计阶段** |  | 39d | 2017-06-24 | 2017-08-16 |  |  |  |  |  |  |  |  |  |  |  | 472h |  |  |
| 23 | 1.3.1 | **总体架构设计** |  | 22d | 2017-06-24 | 2017-07-22 |  |  |  |  |  |  |  |  |  |  |  | 96h |  |  |
| 24 | 1.3.1.1 | 了解和确定应用、数据、技术三方面需求 |  | 1d | 2017-06-26 | 2017-06-26 |  |  |  |  |  |  |  | 123d | 2d | finish no earlier than 2017-06-26 | 李新光 | 8h |  |  |
| 25 | 1.3.1.2 | 总体蓝图规划 |  | 5d | 2017-06-29 | 2017-07-05 | 24 |  |  |  |  |  |  | 121d | 2d | finish no earlier than 2017-07-05 | 李新光 | 40h |  |  |
| 26 | 1.3.1.3 | 演进路线规划 |  | 1d | 2017-07-10 | 2017-07-10 | 25 |  |  |  |  |  |  | 119d | 2d | finish no earlier than 2017-07-10 | 李新光 | 8h |  |  |
| 27 | 1.3.1.4 | 一期实施重点设计 |  | 5d | 2017-07-13 | 2017-07-19 | 26 |  |  |  |  |  |  | 117d | 2d | finish no earlier than 2017-07-19 | 李新光 | 40h |  |  |
| 28 | 1.3.1.5 | 系统体系架构总结 | milestone | 0d | 2017-07-22 | 2017-07-22 | 27 |  |  |  |  |  |  | 115d |  | finish no earlier than 2017-07-22 | 李新光 |  |  |  |

| ID | WBS | Task | Type | Duration | Start | Finish | Predecessors | Total slack | Free slack | Constraint | Resources | Work |
| --- | --- | --- | --- | --- | --- | --- | --- | --- | --- | --- | --- | --- |
| 29 | 1.3.2 | **贴源数据区逻辑数据模型设计** |  | 16d | 2017-07-10 | 2017-07-31 |  |  |  |  |  | 208h |
| 30 | 1.3.2.1 | 制定模型命名规范 |  | 1d | 2017-07-10 | 2017-07-10 |  | 101d | 0d | start no earlier than 2017-07-10 | 全哨 | 8h |
| 31 | 1.3.2.2 | 分系统详细设计 |  | 12d | 2017-07-11 | 2017-07-26 | 30 | 101d | 2d | start no earlier than 2017-07-11 | 全哨 | 96h |
| 32 | 1.3.2.3 | 代码表整理 |  | 12d | 2017-07-11 | 2017-07-26 | 30 | 101d | 2d | start no earlier than 2017-07-11 | 全哨 | 96h |
| 33 | 1.3.2.4 | 模型整合、验证 | milestone | 0d | 2017-07-29 | 2017-07-29 | 31, 32 | 110d |  | finish no earlier than 2017-07-29 | 全哨 |  |
| 34 | 1.3.2.5 | 编写《逻辑数据模型设计说明文档》 | milestone | 0d | 2017-07-30 | 2017-07-30 | 31, 32 | 99d | 0d | finish no earlier than 2017-07-30 | 全哨 |  |
| 35 | 1.3.2.6 | 评审逻辑数据模型 |  | 1d | 2017-07-31 | 2017-07-31 | 34 | 99d | 0d | start no earlier than 2017-07-31 | 崔小明 | 8h |
| 36 | 1.3.3 | **贴源数据区物理数据模型设计** |  | 5d | 2017-08-01 | 2017-08-06 |  |  |  |  |  | 32h |
| 37 | 1.3.3.1 | 物理数据模型(PDM)设计 |  | 4d | 2017-08-01 | 2017-08-05 | 35 | 99d | 0d | finish no earlier than 2017-08-05 | 崔小明 | 32h |
| 38 | 1.3.3.2 | 源数据与物理数据模型的映射(SDM)，填写《SDM数据映射文档》 | milestone | 0d | 2017-08-06 | 2017-08-06 | 37 | 99d | 0d | finish no earlier than 2017-08-06 | 崔小明 |  |
| 39 | 1.3.4 | **ETL策略设计** |  | 8d | 2017-08-07 | 2017-08-16 |  |  |  |  |  | 136h |
| 40 | 1.3.4.1 | ETL架构及流程详细设计 |  | 3d | 2017-08-07 | 2017-08-09 | 38 | 99d | 2d | start no earlier than 2017-08-07 | 崔小明 | 24h |
| 41 | 1.3.4.2 | 数据归档设计 |  | 3d | 2017-08-14 | 2017-08-16 | 40 | 97d |  | finish no earlier than 2017-08-16 | 崔小明 | 24h |
| 42 | 1.3.4.3 | 数据质量检查设计 |  | 3d | 2017-08-14 | 2017-08-16 | 40 | 97d |  | finish no earlier than 2017-08-16 | 崔小明 | 24h |
| 43 | 1.3.4.4 | 数据抽取设计 |  | 3d | 2017-08-14 | 2017-08-16 | 40 | 97d |  | finish no earlier than 2017-08-16 | 崔小明 | 24h |
| 44 | 1.3.4.5 | 规划数据库结构、参数、空间分配及用户设立，写出规划报告 |  | 3d | 2017-08-07 | 2017-08-09 |  | 102d |  | start no earlier than 2017-08-07 | 崔小明 | 24h |
| 45 | 1.3.4.6 | 制定ETL任务定义、命名和开发规范 |  | 1d | 2017-08-14 | 2017-08-14 |  | 99d |  | finish no earlier than 2017-08-14 | 崔小明 | 8h |
| 46 | 1.3.4.7 | 制定ETL任务增删改的工作流程，并制定ETL任务管理模板 |  | 1d | 2017-08-14 | 2017-08-14 |  | 99d |  | finish no earlier than 2017-08-14 | 崔小明 | 8h |
| 47 | 1.4 | **系统开发阶段** |  | 42d | 2017-08-01 | 2017-09-27 |  |  |  |  |  | 752h |
| 48 | 1.4.1 | 开发环境搭建 |  | 2d | 2013-08-01 | 2013-08-02 |  | 1142d | 0d | start no earlier than 2013-08-01 | 李新光等 | 16h |
| 49 | 1.4.2 | 开发脚本生成器（包括抽取、加载、合并、拉链、归档等） |  | 8d | 2013-08-05 | 2013-08-14 | 48 | 1142d |  | finish no earlier than 2013-08-14 | 李新光等 | 64h |
| 50 | 1.4.3 | **流程调度程序开发并进行测试** |  | 10d | 2017-08-01 | 2017-08-14 |  | 32d |  |  |  | 80h |
| 51 | 1.4.3.1 | 流程调度程序开发 |  | 7d | 2017-08-01 | 2017-08-09 |  | 32d | 0d | finish no earlier than 2013-08-13 | 张晓刚 | 56h |
| 52 | 1.4.3.2 | 流程调度程序测试 |  | 3d | 2017-08-10 | 2017-08-14 | 51 | 32d |  |  | 张晓刚 | 24h |

| ID | WBS | Task | Type | Duration | Start | Finish | Predecessors | Total slack | Free slack | Constraint | Resources | Work |
| --- | --- | --- | --- | --- | --- | --- | --- | --- | --- | --- | --- | --- |
| 53 | 1.4.4 | **数据加载脚本开发并进行测试** |  | 5d | 2017-08-01 | 2017-08-07 |  | 37d |  |  |  | 40h |
| 54 | 1.4.4.1 | 按MAPPING结果定制ETL任务、使用脚本生成器生成脚本 |  | 3d | 2017-08-01 | 2017-08-03 |  | 37d | 0d | finish no earlier than 2013-08-21 | 李新光等 | 24h |
| 55 | 1.4.4.2 | 数据加载脚本测试（包括数据准确性和性能两方面内容） |  | 2d | 2017-08-04 | 2017-08-07 | 54 | 37d |  | start no earlier than 2013-08-22 | 李新光等 | 16h |
| 56 | 1.4.5 | **数据处理脚本开发并进行测试** |  | 7d | 2017-08-01 | 2017-08-09 |  | 35d |  |  |  | 40h |
| 57 | 1.4.5.1 | 按MAPPING结果定制ETL任务、使用脚本生成器生成脚本 |  | 3d | 2017-08-01 | 2017-08-03 |  | 39d |  | finish no earlier than 2013-08-28 | 李新光等 | 24h |
| 58 | 1.4.5.2 | 设计ETL调度数据获取方案、归档脚本 |  | 5d | 2017-08-01 | 2017-08-07 |  | 37d |  | finish no earlier than 2013-08-30 |  |  |
| 59 | 1.4.5.3 | stage层数据加载，ods层数据处理追加、merge、拉链逻辑进行单元测试，核查数据处理后的数据，编写单元测试报告 |  | 5d | 2017-08-01 | 2017-08-07 |  | 35d | 0d | finish no earlier than 2013-08-30 |  |  |
| 60 | 1.4.5.4 | 数据处理脚本测试（包括数据准确性和性能两方面内容） |  | 2d | 2017-08-08 | 2017-08-09 | 59 | 35d |  | start no earlier than 2013-08-27 | 李新光等 | 16h |
| 61 | 1.4.6 | **数据抽取程序开发并进行测试** |  | 10d | 2017-08-01 | 2017-08-14 |  | 32d |  |  |  | 80h |
| 62 | 1.4.6.1 | 数据抽取程序开发 |  | 8d | 2017-08-01 | 2017-08-10 |  | 32d | 0d | finish no earlier than 2013-08-30 | 李新光等 | 64h |
| 63 | 1.4.6.2 | 数据抽取程序测试 |  | 2d | 2017-08-11 | 2017-08-14 | 62 | 32d |  | finish no earlier than 2013-08-23 | 李新光等 | 16h |
| 64 | 1.4.7 | **数据归档脚本开发并进行测试** |  | 10d | 2017-08-01 | 2017-08-14 |  | 32d |  |  |  | 80h |
| 65 | 1.4.7.1 | 数据归档脚本开发 |  | 7d | 2017-08-01 | 2017-08-09 |  | 32d | 0d | start no earlier than 2013-09-02 | 李新光等 | 56h |
| 66 | 1.4.7.2 | 数据归档脚本测试 |  | 3d | 2017-08-10 | 2017-08-14 | 65 | 32d |  |  | 李新光等 | 24h |
| 67 | 1.4.8 | **数据质量检查脚本开发并测试及ETL任务和集群数据开发环境部署** |  | 10d | 2017-08-01 | 2017-08-14 |  | 32d |  |  |  | 352h |
| 68 | 1.4.8.1 | 数据质量模型设计 |  | 3d | 2017-08-01 | 2017-08-03 |  | 39d |  | start no earlier than 2013-09-16 | 李新光等 | 24h |
| 69 | 1.4.8.2 | 数据质量脚本开发 |  | 3d | 2017-08-01 | 2017-08-03 |  | 39d |  | start no earlier than 2013-09-16 | 李新光等 | 24h |
| 70 | 1.4.8.3 | 数据质量脚本测试 |  | 10d | 2017-08-01 | 2017-08-14 |  | 32d |  | finish no earlier than 2013-09-27 | 李新光等 | 80h |
| 71 | 1.4.8.4 | 数据质量核查部署 |  | 8d | 2017-08-01 | 2017-08-10 |  | 34d |  | finish no earlier than 2013-09-25 | 李新光等 | 64h |
| 72 | 1.4.8.5 | 在开发环境测试脚本、ods层处理SQL、建表DDL生成器脚本 |  | 5d | 2017-08-01 | 2017-08-07 |  | 37d |  | start no earlier than 2013-09-23 | 李新光等 | 40h |
| 73 | 1.4.8.6 | 按照Automation目录规则，批量部署ETL作业及处理SQL |  | 5d | 2017-08-01 | 2017-08-07 |  | 37d |  | start no earlier than 2013-09-23 | 李新光等 | 40h |
| 74 | 1.4.8.7 | 与云平台数据推送进行连调测试 |  | 10d | 2017-08-01 | 2017-08-14 |  | 32d |  | finish no earlier than 2013-09-27 | 李新光等 | 80h |
| 75 | 1.5 | **测试与验收阶段** |  | 62d | 2017-10-08 | 2017-12-30 |  |  |  |  |  | 576h |
| 76 | 1.5.1 | **生产环境系统部署** |  | 24d | 2017-10-08 | 2017-11-08 |  |  |  |  |  | 96h |
| 77 | 1.5.1.1 | 基础设施部署 |  | 8d | 2017-10-09 | 2017-10-18 |  | 40d | 2d | finish no earlier than 2017-10-18 |  |  |
| 78 | 1.5.1.2 | 应用程序部署 | milestone | 0d | 2017-10-21 | 2017-10-21 | 77 | 38d | 0d | finish no earlier than 2017-10-21 | 崔小明 |  |
| 79 | 1.5.1.3 | 系统连通性测试 |  | 1d | 2017-10-23 | 2017-10-23 | 78 | 38d | 1d | finish no earlier than 2017-10-23 | 崔小明 | 8h |
| 80 | 1.5.1.4 | 系统集成测试 |  | 11d | 2017-10-25 | 2017-11-08 | 79 | 37d |  | finish no earlier than 2017-11-08 | 崔小明 | 88h |

Notes:
- 54: 8月19日需要Hadoop开发人员到位
- 57: 8月19日需要Hadoop开发人员到位

| ID | WBS | Task | Type | Duration | Start | Finish | Predecessors | Total slack | Free slack | Constraint | Resources | Work |
| --- | --- | --- | --- | --- | --- | --- | --- | --- | --- | --- | --- | --- |
| 81 | 1.5.2 | **系统数据初始化** |  | 32d | 2017-10-21 | 2017-12-04 |  |  |  |  |  | 336h |
| 82 | 1.5.2.1 | 与云数据平台项目组讨论初始化顺序、获取方式等内容，确定最终方案 |  | 10d | 2017-10-23 | 2017-11-05 |  | 6d | 2d | finish no earlier than 2017-11-05 | 崔小明 | 80h |
| 83 | 1.5.2.2 | 获取初始化数据，加载到临时区 |  | 10d | 2017-11-08 | 2017-11-21 | 82 | 4d | 0d | finish no earlier than 2017-11-21 | 崔小明 | 80h |
| 84 | 1.5.2.3 | 临时区结果校验，修正问题 |  | 6d | 2017-11-22 | 2017-11-29 | 83 | 4d | 2d | start no earlier than 2017-11-22 | 崔小明 | 48h |
| 85 | 1.5.2.4 | 执行ODS初始化 |  | 10d | 2017-11-13 | 2017-11-26 |  | 19d | 0d | finish no earlier than 2017-11-26 | 崔小明 | 80h |
| 86 | 1.5.2.5 | ODS结果校验，修正问题 |  | 6d | 2017-11-27 | 2017-12-04 | 85 | 19d |  | start no earlier than 2017-11-27 | 崔小明 | 48h |
| 87 | 1.5.3 | 系统试运行 |  | 18d | 2017-12-04 | 2017-12-27 | 84 | 2d |  | finish no earlier than 2017-12-27 | 崔小明 | 144h |
| 88 | 1.5.4 | 系统移交 | milestone | 0d | 2017-12-30 | 2017-12-30 | 87 | 0d |  | finish no earlier than 2017-12-30 | PM |  |
| 89 | 1.6 | **项目管理** |  | 93d | 2017-06-24 | 2017-10-31 |  |  |  |  |  | 1504h |
| 90 | 1.6.1 | 布置工作场地，搭建工作环境 |  | 3d | 2017-06-26 | 2017-06-28 |  | 131d | 2d | finish no earlier than 2017-06-28 | PM | 24h |
| 91 | 1.6.2 | 搭建文档服务器，确定工作流程 |  | 1d | 2017-07-03 | 2017-07-03 | 90 | 129d |  | finish no earlier than 2017-07-03 | PM | 8h |
| 92 | 1.6.3 | 日常后勤管理 |  | 92d | 2017-06-26 | 2017-10-31 |  | 43d |  | finish no earlier than 2017-10-31 | PM | 736h |
| 93 | 1.6.4 | 日常项目管理 |  | 92d | 2017-06-26 | 2017-10-31 |  | 43d |  | finish no earlier than 2017-10-31 | PM | 736h |
